# Site Gaming Gen V2.0

Schedule from GanttProject, 2015-10-16 to 2016-01-28, baseline: Instantanée N°1.
Association Gaming Generation
La gestion du projet est confié à Jeremy PANIZZA. / La partie Design est gérer par Frédéric GUAZZINNI. / La partie Technique du projet est gérer par Jérémy YOUNG. / Le tout sous la surveillance de Pierre CHATELAIN, Président de l'Association. / Le nouveau site pour l'Association « Gaming Génération » développer avec les technologies de dernier crie : / • Node.JS / • Socket.IO / • StrongLoop / • MongoDB / • Angular.JS / Le développement de ce site sera fait en deux temps : / • Installation de la base des nouvelles techno "Back-End' (Node.JS, StrongLoop et MongoDB) avec les pages du site existant. / • Modification des pages du site existant pour ajouter Angular.JS et rendre "Dynamique", Alimentation de la BDD, Ajout des nouvelles fonctionnalisées. / Ce document est amené à évoluer avec le temps. Il faut garder en tête que le diagramme de Gantt est là pour avoir un guide et essayer de respecter les deads lines du projet, cependant je ne peux travailler à temps plein sur ce projet. Comme précisé lors des réunions, je m'engage à tout faire pour respecter les délais, mais ce projet passe tout de même après ma vie perso et pro.

## Calendars

- Project calendar: Mon-Fri working; Sat-Sun off.

## Resources

| Resource | Group |
| --- | --- |
| Jérémy YOUNG | Developpeur |
| Jeremy PANIZZA |  |
| Pierre CHATELAIN | Président Asso |
| Frédéric GUAZZINNI | Graphiste / Designer |

## Schedule

| ID | WBS | Task | Duration | Start | Finish | Predecessors | Complete | Baseline start | Baseline finish | Baseline duration | Resources |
| --- | --- | --- | --- | --- | --- | --- | --- | --- | --- | --- | --- |
| 1 | 1 | **Pré requis** | 3d | 2015-10-16 | 2015-10-20 |  | 80% | 2015-10-16 | 2015-10-20 | 3d | Jérémy YOUNG |
| 2 | 1.1 | Redaction de la doc technique | 3d | 2015-10-16 | 2015-10-20 |  | 60% | 2015-10-16 | 2015-10-20 | 3d |  |
| 3 | 1.2 | Ré-installation de la machine physique | 1d | 2015-10-16 | 2015-10-16 |  | 100% | 2015-10-16 | 2015-10-16 | 1d |  |
| 4 | 1.3 | Préparation de l'hote | 1d | 2015-10-19 | 2015-10-19 | 3 | 100% | 2015-10-19 | 2015-10-19 | 1d |  |
| 5 | 1.4 | Préparatoin de l'environement de Dev | 1d | 2015-10-20 | 2015-10-20 | 4 | 100% | 2015-10-20 | 2015-10-20 | 1d |  |
| 6 | 2 | **Phase 1** | 23d | 2015-10-21 | 2015-11-20 | 1 | 58% | 2015-10-21 | 2015-11-20 | 23d | Jérémy YOUNG |
| 7 | 2.1 | Installation des technos | 1d | 2015-10-21 | 2015-10-21 |  | 100% | 2015-10-21 | 2015-10-21 | 1d |  |
| 8 | 2.2 | Recopie de l'existant | 1d | 2015-10-22 | 2015-10-22 | 7 | 100% | 2015-10-22 | 2015-10-22 | 1d |  |
| 9 | 2.3 | Rendre les pages actuelles accesible | 3d | 2015-10-23 | 2015-10-27 | 8 | 100% | 2015-10-23 | 2015-10-27 | 3d |  |
| 10 | 2.4 | Création des models | 3d | 2015-10-28 | 2015-10-30 | 9 | 100% | 2015-10-28 | 2015-10-30 | 3d |  |
| 11 | 2.5 | Test unitaires | 2d | 2015-11-02 | 2015-11-03 | 10 | 100% | 2015-11-02 | 2015-11-03 | 2d |  |
| 12 | 2.6 | Intégration du design | 1d | 2015-11-04 | 2015-11-04 | 11 | 100% | 2015-11-04 | 2015-11-04 | 1d |  |
| 13 | 2.7 | Test d'intégration | 4d | 2015-11-05 | 2015-11-10 | 12 |  | 2015-11-05 | 2015-11-10 | 4d |  |
| 14 | 2.8 | Ajout d'un début de back office | 5d | 2015-11-11 | 2015-11-17 | 13 | 61% | 2015-11-11 | 2015-11-17 | 5d |  |
| 15 | 2.9 | Test des nouvelles fonctoinnalitées | 2d | 2015-11-18 | 2015-11-19 | 14 |  | 2015-11-18 | 2015-11-19 | 2d |  |
| 16 | 2.10 | Mise en Prod | 1d | 2015-11-20 | 2015-11-20 | 15 |  | 2015-11-20 | 2015-11-20 | 1d |  |
| 17 | 2.11 | Déplacement nom de domaine | 1d | 2015-11-18 | 2015-11-18 | 14 |  | 2015-11-18 | 2015-11-18 | 1d |  |
| 18 | 3 | **Phase 2** | 48d | 2015-11-23 | 2016-01-27 | 6 | 12% | 2015-11-23 | 2016-01-27 | 48d | Jérémy YOUNG |
| 19 | 3.1 | Création des models supplémentaires | 2d | 2015-11-23 | 2015-11-24 |  | 100% | 2015-11-23 | 2015-11-24 | 2d |  |
| 20 | 3.2 | **Conception du Back Office** | 22d | 2015-11-25 | 2015-12-24 | 19 | 18% | 2015-11-25 | 2015-12-24 | 22d |  |
| 21 | 3.2.1 | Conception des API | 16d | 2015-11-25 | 2015-12-16 |  | 25% | 2015-11-25 | 2015-12-16 | 16d |  |
| 22 | 3.2.2 | Installation de Socket.IO | 1d | 2015-12-17 | 2015-12-17 | 21 |  | 2015-12-17 | 2015-12-17 | 1d |  |
| 23 | 3.2.3 | Génération des pages supplémentaires | 5d | 2015-12-18 | 2015-12-24 | 22 |  | 2015-12-18 | 2015-12-24 | 5d |  |
| 24 | 3.3 | **Conception du Front-End** | 20d | 2015-12-25 | 2016-01-21 | 20 |  | 2015-12-25 | 2016-01-21 | 20d |  |
| 25 | 3.3.1 | Génération des pages | 8d | 2015-12-25 | 2016-01-05 |  |  | 2015-12-25 | 2016-01-05 | 8d |  |
| 26 | 3.3.2 | Adaptation des pages actuelles dans les pages généré | 12d | 2016-01-06 | 2016-01-21 | 25 |  | 2016-01-06 | 2016-01-21 | 12d |  |

Notes:
- 1: Préparation de l'ensemble des éléments pour pouvoir commencer le projet
- 3: Mise à jour à la derniere version du serveur linux Ubuntu (14.04 LTS)
- 4: Installation de : / - Node.JS dernière version (4.2.1) / - NPM dernière version (3.3.8) / - PM (StrongLoop)
- 5: Création d'un projet sous Cloude9 (IDE)
- 6: Installation de la base des nouvelles techno "Back-End' (Node.JS, StrongLoop et MongoDB) avec les pages du site existant.
- 7: Installation de Node.JS (4.2.1), MongoDB (3.0.7) et StrongLoop sur l'IDE Cloude9 pour pouvoir débuter le développement.
- 8: Récupération complete du site actuel sur le répo GitHub de l'Association Gaming Generation
- 9: Vu que le site actuel n'a pas d'architecture, il faut temporairement adapter Node.JS et StrongLoop pour pouvoir déservir les pages actuelles.
- 10: Création des Modeles de données avec StrongLoop
- 11: Vérification que chaque partie atomique joue bien son rôle
- 12: Ajout du CSS créer par Dolz
- 13: Vérification que l'ensemble fonctionne
- 14: Développement d'un début de back office, permettant de gérer les news
- 15: Vérification et correction des nouvelles fonctionnalitées.
- 18: Modification des pages du site existant pour ajouter Angular et rendre "Dynamique", Alimentation de la BDD, Ajout des nouvelles fonctionnalitées
- 20: Zone pure de Dev
- 24: Zone Adaptation du "contenue" de l'ancien site à la nouvelle architecture

| ID | WBS | Task | Duration | Start | Finish | Predecessors | Baseline start | Baseline finish | Baseline duration |
| --- | --- | --- | --- | --- | --- | --- | --- | --- | --- |
| 27 | 3.4 | **Test & Intégration** | 4d | 2016-01-22 | 2016-01-27 | 24 | 2016-01-22 | 2016-01-27 | 4d |
| 28 | 3.4.1 | Test unitaires | 2d | 2016-01-22 | 2016-01-25 |  | 2016-01-22 | 2016-01-25 | 2d |
| 29 | 3.4.2 | Test sécuritées | 2d | 2016-01-26 | 2016-01-27 | 28 | 2016-01-26 | 2016-01-27 | 2d |
| 30 | 4 | Mise en production | 1d | 2016-01-28 | 2016-01-28 | 18 | 2016-01-28 | 2016-01-28 | 1d |

Notes:
- 30: Mise en production de la version 2.0 du site de l'Association Gaming Géneration.
